# virtex-ng

Schedule from MS Project, 2007-07-09 to 2007-07-24, A marks actual dates.
Mosman Consultoria e Desenvolvimento

## Calendars

- Standard: Mon-Fri 08:00-12:00, 13:00-17:00; Sat-Sun off.

## Resources

| Resource | Group |
| --- | --- |
| Andrei | Desenvolvimento |
| Monica | Teste |
| Fabrício | Teste |

## Schedule

| ID | WBS | Task | Duration | Start | Finish | Predecessors | Complete | Remaining | Total slack | Free slack | Deadline | Resources | Work | Actual work |
| --- | --- | --- | --- | --- | --- | --- | --- | --- | --- | --- | --- | --- | --- | --- |
| 1 | 1 | **Base** | 11.5d | 2007-07-09 08:00 | 2007-07-24 12:00 |  |  |  | -10.5d | 0d | 2007-07-09 17:00 |  | 216h |  |
| 2 | 1.1 | **Model** | 11.38d | 2007-07-09 09:00 | 2007-07-24 12:00 |  |  |  | -10.5d | 0d |  |  | 80h |  |
| 3 | 1.1.1 | Persistencia | 3d | 2007-07-09 09:00 | 2007-07-12 12:00 |  |  |  | -10.5d | 0d |  | Andrei | 24h |  |
| 4 | 1.1.2 | Negócios | 7d | 2007-07-12 14:00 | 2007-07-24 12:00 | 3 |  |  | -10.62d | 0d |  | Andrei | 56h |  |
| 5 | 1.2 | **View** | 2.25d | 2007-07-09 09:00 | 2007-07-11 11:00 |  |  |  | -1.38d | 0d |  |  | 62h |  |
| 6 | 1.2.1 | VirtexView | 16h | 2007-07-09 09:00 | 2007-07-11 11:00 |  |  |  | -1.38d | 0d |  | Andrei | 16h |  |
| 7 | 1.2.2 | Menu principal | 16h | 2007-07-09 09:00 | 2007-07-11 11:00 |  |  |  | -1.38d | 0d |  | Andrei | 16h |  |
| 8 | 1.2.3 | Redirecionamento | 4h | 2007-07-09 09:00 | 2007-07-09 15:00 |  |  |  | 0.25d |  |  | Andrei | 4h |  |
| 9 | 1.2.4 | Erro | 4h | 2007-07-09 09:00 | 2007-07-09 15:00 |  |  |  | 0.25d |  |  | Andrei | 4h |  |
| 10 | 1.2.5 | Menu secundário | 6h | 2007-07-09 09:00 | 2007-07-09 17:00 |  |  |  | 0d |  |  | Andrei | 6h |  |
| 11 | 1.2.6 | CSS | 16h | 2007-07-09 09:00 | 2007-07-11 11:00 |  |  |  | -1.38d | 0d |  | Andrei | 16h |  |
| 12 | 1.3 | **Controller** | 10.62d | 2007-07-09 09:00 | 2007-07-23 15:00 |  |  |  | -9.75d | 0d |  |  | 74h |  |
| 13 | 1.3.1 | VirtexController | 16h | 2007-07-09 09:00 | 2007-07-11 11:00 |  |  |  | -9.75d | 0d |  | Andrei | 16h |  |
| 14 | 1.3.2 | Login | 12h | 2007-07-11 11:00 | 2007-07-12 18:00 | 13 |  |  | -9.62d | 0d |  | Andrei | 12h |  |
| 15 | 1.3.3 | Privilégios | 24h | 2007-07-13 09:00 | 2007-07-18 12:00 | 14 |  |  | -9.75d | 0d |  | Andrei | 24h |  |
| 16 | 1.3.4 | Licenciamento | 16h | 2007-07-18 14:00 | 2007-07-20 16:00 | 15 |  |  | -9.88d | 0d |  | Andrei | 16h |  |
| 17 | 1.3.5 | Tratamento de excessões | 6h | 2007-07-20 16:00 | 2007-07-23 15:00 | 16 |  |  | -9.75d | 0d |  | Andrei | 6h |  |
| 18 | 1.4 | **Application** | 1.5d | 2007-07-09 08:00 | 2007-07-10 12:00 |  |  |  | -0.5d | 0d |  |  |  |  |
| 19 | 1.4.1 | VirtexApplication | 12h | 2007-07-09 08:00 | 2007-07-10 12:00 |  |  |  | -0.5d | 0d |  |  |  |  |
| 20 | 1.4.2 | VirtexApplicationDaemon | 6h | 2007-07-09 08:00 | 2007-07-09 15:00 |  |  |  | 0.25d |  |  |  |  |  |
| 21 | 1.4.3 | Tratamento de excessões | 6h | 2007-07-09 08:00 | 2007-07-09 15:00 |  |  |  | 0.25d |  |  |  |  |  |
| 22 | 2 | **Framework** | 2.25d | 2007-07-09 09:00 A | 2007-07-11 11:00 |  | 3% | 2.19d | 9.12d |  |  |  | 75h | 2h |
| 23 | 2.1 | Passar erros por exceptions | 12h | 2007-07-09 09:00 | 2007-07-10 16:00 |  |  |  | 9.62d |  |  | Andrei | 12h |  |
| 24 | 2.2 | Funções de IP: usar pear | 12h | 2007-07-09 09:00 | 2007-07-10 16:00 |  |  |  | 9.62d |  |  | Andrei | 12h |  |

| ID | WBS | Task | Duration | Start | Finish | Predecessors | Complete | Total slack | Free slack | Resources | Work | Actual work |
| --- | --- | --- | --- | --- | --- | --- | --- | --- | --- | --- | --- | --- |
| 25 | 2.3 | **SOFreeBSD** | 0.25d | 2007-07-09 09:00 A | 2007-07-09 11:00 A |  | 100% |  |  |  | 2h | 2h |
| 26 | 2.3.1 | Bloqueio de MAC via ARP | 2h | 2007-07-09 09:00 A | 2007-07-09 11:00 A |  | 100% |  |  | Andrei | 2h | 2h |
| 27 | 2.4 | **Mconfig** | 1.12d | 2007-07-09 09:00 | 2007-07-10 10:00 |  |  | 10.25d |  |  | 8h |  |
| 28 | 2.4.1 | Gravação de arquivos ini | 8h | 2007-07-09 09:00 | 2007-07-10 10:00 |  |  | 10.25d |  | Andrei | 8h |  |
| 29 | 2.5 | **Deployment** | 2.25d | 2007-07-09 09:00 | 2007-07-11 11:00 |  |  | 9.12d |  |  | 32h |  |
| 30 | 2.5.1 | **dependence lists** | 1.12d | 2007-07-09 09:00 | 2007-07-10 10:00 |  |  | 10.25d |  |  | 16h |  |
| 31 | 2.5.1.1 | os packages | 8h | 2007-07-09 09:00 | 2007-07-10 10:00 |  |  | 10.25d |  | Andrei | 8h |  |
| 32 | 2.5.1.2 | pear packages | 8h | 2007-07-09 09:00 | 2007-07-10 10:00 |  |  | 10.25d |  | Andrei | 8h |  |
| 33 | 2.5.2 | InstallScript | 16h | 2007-07-09 09:00 | 2007-07-11 11:00 |  |  | 9.12d |  | Andrei | 16h |  |
| 34 | 2.6 | **Documentação** | 0.75d | 2007-07-09 09:00 | 2007-07-09 16:00 |  |  | 10.62d |  |  | 9h |  |
| 35 | 2.6.1 | Doxygen Tags | 5h | 2007-07-09 09:00 | 2007-07-09 16:00 |  |  | 10.62d |  | Andrei | 5h |  |
| 36 | 2.6.2 | Deployment | 4h | 2007-07-09 09:00 | 2007-07-09 15:00 |  |  | 10.75d |  | Andrei | 4h |  |
| 37 | 3 | **Frontend** | 10d | 2007-07-09 08:00 | 2007-07-20 17:00 |  |  | 1.5d |  |  | 594h |  |
| 38 | 3.1 | **Interface Administrativa** | 10d | 2007-07-09 08:00 | 2007-07-20 17:00 |  |  | 1.5d |  |  | 594h |  |
| 39 | 3.1.1 | Navegabilidade | 16h | 2007-07-09 09:00 | 2007-07-11 11:00 |  |  | 9.12d |  | Andrei | 16h |  |
| 40 | 3.1.2 | Menu Principal | 16h | 2007-07-09 09:00 | 2007-07-11 11:00 |  |  | 9.12d |  | Andrei | 16h |  |
| 41 | 3.1.3 | **Clientes** | 9.12d | 2007-07-09 09:00 | 2007-07-20 10:00 |  |  | 2.25d |  |  | 168h |  |
| 42 | 3.1.3.1 | Cadastro | 8h | 2007-07-09 09:00 | 2007-07-10 10:00 |  |  | 8d | 0d | Andrei | 8h |  |
| 43 | 3.1.3.2 | **Listagem** | 2.25d | 2007-07-10 10:00 | 2007-07-12 12:00 |  |  | 8d |  |  | 16h |  |
| 44 | 3.1.3.2.1 | caixa de pesquisa | 8h | 2007-07-11 11:00 | 2007-07-12 12:00 | 45 |  | 8d |  | Andrei | 8h |  |
| 45 | 3.1.3.2.2 | tela de listagem | 8h | 2007-07-10 10:00 | 2007-07-11 11:00 | 42 |  | 8d | 0d | Andrei | 8h |  |
| 46 | 3.1.3.3 | Ficha do cliente | 6h | 2007-07-10 10:00 | 2007-07-10 18:00 | 42 |  | 9.5d |  | Andrei | 6h |  |
| 47 | 3.1.3.4 | Alteração | 8h | 2007-07-10 10:00 | 2007-07-11 11:00 | 42 |  | 9.12d |  | Andrei | 8h |  |
| 48 | 3.1.3.5 | **Relatórios** | 0.62d | 2007-07-10 10:00 | 2007-07-10 16:00 |  |  | 9.62d |  |  | 8h |  |
| 49 | 3.1.3.5.1 | Lista geral | 4h | 2007-07-10 10:00 | 2007-07-10 16:00 | 42 |  | 9.62d |  | Andrei | 4h |  |
| 50 | 3.1.3.5.2 | Clientes por cidade | 4h | 2007-07-10 10:00 | 2007-07-10 16:00 | 42 |  | 9.62d |  | Andrei | 4h |  |

| ID | WBS | Task | Duration | Start | Finish | Predecessors | Total slack | Free slack | Resources | Work |
| --- | --- | --- | --- | --- | --- | --- | --- | --- | --- | --- |
| 51 | 3.1.3.6 | **Menus** | 2.62d | 2007-07-09 09:00 | 2007-07-11 15:00 |  | 8.75d |  |  | 26h |
| 52 | 3.1.3.6.1 | Itens do menu principal | 8h | 2007-07-09 09:00 | 2007-07-10 10:00 |  | 10.25d |  | Andrei | 8h |
| 53 | 3.1.3.6.2 | Submenu de clientes | 18h | 2007-07-09 09:00 | 2007-07-11 15:00 |  | 8.75d |  | Andrei | 18h |
| 54 | 3.1.3.7 | **Contas** | 4.5d | 2007-07-13 15:00 | 2007-07-20 10:00 |  | 2.25d |  |  | 32h |
| 55 | 3.1.3.7.1 | Listagem (banda larga, hospedagem, discado) | 16h | 2007-07-13 15:00 | 2007-07-17 17:00 | 60 | 2.25d | 0d | Andrei | 16h |
| 56 | 3.1.3.7.2 | Alteração | 8h | 2007-07-17 17:00 | 2007-07-18 18:00 | 55 | 2.25d | 0.12d | Andrei | 8h |
| 57 | 3.1.3.7.3 | Criação de conta adicional | 8h | 2007-07-19 09:00 | 2007-07-20 10:00 | 56 | 2.25d |  | Andrei | 8h |
| 58 | 3.1.3.8 | **Contratos/Cobrança** | 5.75d | 2007-07-10 10:00 | 2007-07-17 17:00 |  | 2.38d |  |  | 64h |
| 59 | 3.1.3.8.1 | Resumo (listagem de contratos e faturas) | 8h | 2007-07-13 15:00 | 2007-07-16 16:00 | 60 | 4.5d | 0d | Andrei | 8h |
| 60 | 3.1.3.8.2 | Novo Contrato | 24h | 2007-07-10 10:00 | 2007-07-13 15:00 | 112 | 2.25d | 0d | Andrei | 24h |
| 61 | 3.1.3.8.3 | Detalhes do contrato | 8h | 2007-07-16 16:00 | 2007-07-17 17:00 | 59 | 4.5d |  | Andrei | 8h |
| 62 | 3.1.3.8.4 | Migração de Contrato | 12h | 2007-07-13 15:00 | 2007-07-17 11:00 | 60 | 5.12d |  | Andrei | 12h |
| 63 | 3.1.3.8.5 | Pagamento/Baixa de Fatura | 12h | 2007-07-13 15:00 | 2007-07-17 11:00 | 60 | 5.12d |  | Andrei | 12h |
| 64 | 3.1.4 | **Cobrança** | 7.88d | 2007-07-09 09:00 | 2007-07-18 18:00 |  | 3.5d |  |  | 123h |
| 65 | 3.1.4.1 | Bloqueios | 8h | 2007-07-13 15:00 | 2007-07-16 16:00 | 60 | 5.62d |  | Andrei | 8h |
| 66 | 3.1.4.2 | Retorno do banco | 16h | 2007-07-13 15:00 | 2007-07-17 17:00 | 60 | 4.5d |  | Andrei | 16h |
| 67 | 3.1.4.3 | Gerar remessa p/ banco | 24h | 2007-07-13 15:00 | 2007-07-18 18:00 | 60 | 3.38d |  | Andrei | 24h |
| 68 | 3.1.4.4 | Emitir boletos | 12h | 2007-07-13 15:00 | 2007-07-17 11:00 | 60 | 5.12d |  | Andrei | 12h |
| 69 | 3.1.4.5 | **Relatórios** | 0.75d | 2007-07-13 15:00 | 2007-07-16 12:00 |  | 6d |  |  | 52h |
| 70 | 3.1.4.5.1 | Atrasos | 6h | 2007-07-13 15:00 | 2007-07-16 12:00 | 60 | 6d |  | Andrei | 6h |
| 71 | 3.1.4.5.2 | Reagendamentos | 6h | 2007-07-13 15:00 | 2007-07-16 12:00 | 60 | 6d |  | Andrei | 6h |
| 72 | 3.1.4.5.3 | Bloqueios e Desbloqueios | 6h | 2007-07-13 15:00 | 2007-07-16 12:00 | 60 | 6d |  | Andrei | 6h |
| 73 | 3.1.4.5.4 | Emails de Cobrança | 5h | 2007-07-13 15:00 | 2007-07-16 11:00 | 60 | 6.12d |  | Andrei | 5h |
| 74 | 3.1.4.5.5 | Cortesias | 3h | 2007-07-13 15:00 | 2007-07-13 18:00 | 60 | 6.38d |  | Andrei | 3h |
| 75 | 3.1.4.5.6 | Adesões | 6h | 2007-07-13 15:00 | 2007-07-16 12:00 | 60 | 6d |  | Andrei | 6h |
| 76 | 3.1.4.5.7 | Cancelamentos | 6h | 2007-07-13 15:00 | 2007-07-16 12:00 | 60 | 6d |  | Andrei | 6h |
| 77 | 3.1.4.5.8 | Evolução (crescimento) | 6h | 2007-07-13 15:00 | 2007-07-16 12:00 | 60 | 6d |  | Andrei | 6h |
| 78 | 3.1.4.5.9 | Clientes por produto | 4h | 2007-07-13 15:00 | 2007-07-16 10:00 | 60 | 6.25d |  | Andrei | 4h |
| 79 | 3.1.4.5.10 | Clientes por tipo de produto | 4h | 2007-07-13 15:00 | 2007-07-16 10:00 | 60 | 6.25d |  | Andrei | 4h |

| ID | WBS | Task | Duration | Start | Finish | Predecessors | Total slack | Free slack | Resources | Work |
| --- | --- | --- | --- | --- | --- | --- | --- | --- | --- | --- |
| 80 | 3.1.4.6 | **Menus** | 1.12d | 2007-07-09 09:00 | 2007-07-10 10:00 |  | 10.25d |  |  | 11h |
| 81 | 3.1.4.6.1 | Itens do menu principal | 3h | 2007-07-09 09:00 | 2007-07-09 12:00 |  | 11d |  | Andrei | 3h |
| 82 | 3.1.4.6.2 | Submenus individuais | 8h | 2007-07-09 09:00 | 2007-07-10 10:00 |  | 10.25d |  | Andrei | 8h |
| 83 | 3.1.5 | **Suporte** | 0.62d | 2007-07-09 09:00 | 2007-07-09 15:00 |  | 10.75d |  |  | 26h |
| 84 | 3.1.5.1 | Gráficos | 4h | 2007-07-09 09:00 | 2007-07-09 15:00 |  | 10.75d |  | Andrei | 4h |
| 85 | 3.1.5.2 | **Monitoramento** | 0.62d | 2007-07-09 09:00 | 2007-07-09 15:00 |  | 10.75d |  |  | 6h |
| 86 | 3.1.5.2.1 | Caixa de Monitoramento | 2h | 2007-07-09 09:00 | 2007-07-09 11:00 |  | 11.12d |  | Andrei | 2h |
| 87 | 3.1.5.2.2 | Tela de Monitoramento | 4h | 2007-07-09 09:00 | 2007-07-09 15:00 |  | 10.75d |  | Andrei | 4h |
| 88 | 3.1.5.3 | **Ferramentas** | 0.62d | 2007-07-09 09:00 | 2007-07-09 15:00 |  | 10.75d |  |  | 10h |
| 89 | 3.1.5.3.1 | ARP | 3h | 2007-07-09 09:00 | 2007-07-09 12:00 |  | 11d |  | Andrei | 3h |
| 90 | 3.1.5.3.2 | Ping | 3h | 2007-07-09 09:00 | 2007-07-09 12:00 |  | 11d |  | Andrei | 3h |
| 91 | 3.1.5.3.3 | Calculadora IP | 4h | 2007-07-09 09:00 | 2007-07-09 15:00 |  | 10.75d |  | Andrei | 4h |
| 92 | 3.1.5.4 | **Relatórios** | 0.38d | 2007-07-09 09:00 | 2007-07-09 12:00 |  | 11d |  |  | 6h |
| 93 | 3.1.5.4.1 | Clientes por banda | 3h | 2007-07-09 09:00 | 2007-07-09 12:00 |  | 11d |  | Andrei | 3h |
| 94 | 3.1.5.4.2 | Clientes sem MAC cadatrado | 3h | 2007-07-09 09:00 | 2007-07-09 12:00 |  | 11d |  | Andrei | 3h |
| 95 | 3.1.6 | **Configurações** | 4.25d | 2007-07-09 08:00 | 2007-07-13 10:00 |  | 2.38d |  |  | 92h |
| 96 | 3.1.6.1 | **Equipamentos** | 4.25d | 2007-07-09 08:00 | 2007-07-13 10:00 |  | 7.25d |  |  | 32h |
| 97 | 3.1.6.1.1 | **POPs** | 1.25d | 2007-07-09 09:00 | 2007-07-10 11:00 |  | 10.12d |  |  | 9h |
| 98 | 3.1.6.1.1.1 | Cadastro | 3h | 2007-07-09 09:00 | 2007-07-09 12:00 |  | 10.12d | 0.12d | Andrei | 3h |
| 99 | 3.1.6.1.1.2 | Listagem | 3h | 2007-07-09 14:00 | 2007-07-09 17:00 | 98 | 10d | 0d | Andrei | 3h |
| 100 | 3.1.6.1.1.3 | Alteração | 3h | 2007-07-09 17:00 | 2007-07-10 11:00 | 99 | 10.12d |  | Andrei | 3h |
| 101 | 3.1.6.1.2 | **NAS** | 4.25d | 2007-07-09 08:00 | 2007-07-13 10:00 |  | 7.25d |  |  | 23h |
| 102 | 3.1.6.1.2.1 | **Cadastro** | 4.25d | 2007-07-09 08:00 | 2007-07-13 10:00 |  | 7.25d |  |  | 16h |
| 103 | 3.1.6.1.2.1.1 | Cadastro de NAS | 8h | 2007-07-09 08:00 | 2007-07-09 17:00 |  | 7.25d | 0d |  |  |
| 104 | 3.1.6.1.2.1.2 | Faixas de Ips | 8h | 2007-07-10 17:00 | 2007-07-11 18:00 | 107 | 7.25d | 0.12d | Andrei | 8h |
| 105 | 3.1.6.1.2.1.3 | Ips Externos (bi-nat) | 8h | 2007-07-12 09:00 | 2007-07-13 10:00 | 104 | 7.25d |  | Andrei | 8h |
| 106 | 3.1.6.1.2.2 | Listagem | 3h | 2007-07-09 17:00 | 2007-07-10 11:00 | 103 | 7.25d | 0d | Andrei | 3h |
| 107 | 3.1.6.1.2.3 | Alteração | 4h | 2007-07-10 11:00 | 2007-07-10 17:00 | 106 | 7.25d | 0d | Andrei | 4h |

| ID | WBS | Task | Duration | Start | Finish | Total slack | Free slack | Resources | Work |
| --- | --- | --- | --- | --- | --- | --- | --- | --- | --- |
| 108 | 3.1.6.2 | **Preferências** | 1.75d | 2007-07-09 09:00 | 2007-07-10 16:00 | 2.25d |  |  | 48h |
| 109 | 3.1.6.2.1 | Resumo | 5h | 2007-07-09 09:00 | 2007-07-09 16:00 | 10.62d |  | Andrei | 5h |
| 110 | 3.1.6.2.2 | Preferências Gerais | 3h | 2007-07-09 09:00 | 2007-07-09 12:00 | 11d |  | Andrei | 3h |
| 111 | 3.1.6.2.3 | Preferências do provedor | 3h | 2007-07-09 09:00 | 2007-07-09 12:00 | 11d |  | Andrei | 3h |
| 112 | 3.1.6.2.4 | **Preferências de Cobrança** | 1.12d | 2007-07-09 09:00 | 2007-07-10 10:00 | 2.25d | 0d |  | 8h |
| 113 | 3.1.6.2.4.1 | Trabalhar com várias formas de pagamento e bancos | 8h | 2007-07-09 09:00 | 2007-07-10 10:00 | 2.25d |  | Andrei | 8h |
| 114 | 3.1.6.2.5 | Modelos de Contrato | 12h | 2007-07-09 09:00 | 2007-07-10 16:00 | 9.62d |  | Andrei | 12h |
| 115 | 3.1.6.2.6 | Cidades | 3h | 2007-07-09 09:00 | 2007-07-09 12:00 | 11d |  | Andrei | 3h |
| 116 | 3.1.6.2.7 | Faixas de Banda | 3h | 2007-07-09 09:00 | 2007-07-09 12:00 | 11d |  | Andrei | 3h |
| 117 | 3.1.6.2.8 | Monitoramento | 3h | 2007-07-09 09:00 | 2007-07-09 12:00 | 11d |  | Andrei | 3h |
| 118 | 3.1.6.2.9 | Links externos | 3h | 2007-07-09 09:00 | 2007-07-09 12:00 | 11d |  | Andrei | 3h |
| 119 | 3.1.6.2.10 | Registro do Software (licenciamento) | 5h | 2007-07-09 09:00 | 2007-07-09 16:00 | 10.62d |  | Andrei | 5h |
| 120 | 3.1.6.3 | **Relatórios** | 0.38d | 2007-07-09 09:00 | 2007-07-09 12:00 | 11d |  |  | 12h |
| 121 | 3.1.6.3.1 | Carga por NAS | 3h | 2007-07-09 09:00 | 2007-07-09 12:00 | 11d |  | Andrei | 3h |
| 122 | 3.1.6.3.2 | Carga por AP | 3h | 2007-07-09 09:00 | 2007-07-09 12:00 | 11d |  | Andrei | 3h |
| 123 | 3.1.6.3.3 | Carga por POP | 3h | 2007-07-09 09:00 | 2007-07-09 12:00 | 11d |  | Andrei | 3h |
| 124 | 3.1.6.3.4 | Clientes por AP | 3h | 2007-07-09 09:00 | 2007-07-09 12:00 | 11d |  | Andrei | 3h |
| 125 | 3.1.7 | **Administração** | 3.38d | 2007-07-09 09:00 | 2007-07-12 12:00 | 8d |  |  | 93h |
| 126 | 3.1.7.1 | Alteração de Senha | 3h | 2007-07-09 09:00 | 2007-07-09 12:00 | 11d |  | Andrei | 3h |
| 127 | 3.1.7.2 | **Administradores** | 0.88d | 2007-07-09 09:00 | 2007-07-09 17:00 | 10.5d |  |  | 14h |
| 128 | 3.1.7.2.1 | Cadastro | 3h | 2007-07-09 09:00 | 2007-07-09 12:00 | 11d |  | Andrei | 3h |
| 129 | 3.1.7.2.2 | Listagem | 2h | 2007-07-09 09:00 | 2007-07-09 11:00 | 11.12d |  | Andrei | 2h |
| 130 | 3.1.7.2.3 | Alteração | 3h | 2007-07-09 09:00 | 2007-07-09 12:00 | 11d |  | Andrei | 3h |
| 131 | 3.1.7.2.4 | Privilégios | 6h | 2007-07-09 09:00 | 2007-07-09 17:00 | 10.5d |  | Andrei | 6h |

| ID | WBS | Task | Duration | Start | Finish | Total slack | Resources | Work |
| --- | --- | --- | --- | --- | --- | --- | --- | --- |
| 132 | 3.1.7.3 | **Planos** | 0.62d | 2007-07-09 09:00 | 2007-07-09 15:00 | 10.75d |  | 11h |
| 133 | 3.1.7.3.1 | Cadastro | 4h | 2007-07-09 09:00 | 2007-07-09 15:00 | 10.75d | Andrei | 4h |
| 134 | 3.1.7.3.2 | Listagem | 3h | 2007-07-09 09:00 | 2007-07-09 12:00 | 11d | Andrei | 3h |
| 135 | 3.1.7.3.3 | Alteração | 4h | 2007-07-09 09:00 | 2007-07-09 15:00 | 10.75d | Andrei | 4h |
| 136 | 3.1.7.4 | **Produtos** | 0.62d | 2007-07-09 09:00 | 2007-07-09 15:00 | 10.75d |  | 11h |
| 137 | 3.1.7.4.1 | Cadastro | 4h | 2007-07-09 09:00 | 2007-07-09 15:00 | 10.75d | Andrei | 4h |
| 138 | 3.1.7.4.2 | Listagem | 3h | 2007-07-09 09:00 | 2007-07-09 12:00 | 11d | Andrei | 3h |
| 139 | 3.1.7.4.3 | Alteração | 4h | 2007-07-09 09:00 | 2007-07-09 15:00 | 10.75d | Andrei | 4h |
| 140 | 3.1.7.5 | **Ferramentas** | 3.38d | 2007-07-09 09:00 | 2007-07-12 12:00 | 8d |  | 36h |
| 141 | 3.1.7.5.1 | Backup | 12h | 2007-07-09 09:00 | 2007-07-10 16:00 | 9.62d | Andrei | 12h |
| 142 | 3.1.7.5.2 | Restore | 24h | 2007-07-09 09:00 | 2007-07-12 12:00 | 8d | Andrei | 24h |
| 143 | 3.1.7.6 | **Relatórios** | 0.88d | 2007-07-09 09:00 | 2007-07-09 18:00 | 10.5d |  | 10h |
| 144 | 3.1.7.6.1 | Backups | 3h | 2007-07-09 09:00 | 2007-07-09 12:00 | 11d | Andrei | 3h |
| 145 | 3.1.7.6.2 | Logs das atividades dos administradores | 7h | 2007-07-09 09:00 | 2007-07-09 18:00 | 10.5d | Andrei | 7h |
| 146 | 3.1.7.7 | **Menus** | 0.88d | 2007-07-09 09:00 | 2007-07-09 17:00 | 10.5d |  | 8h |
| 147 | 3.1.7.7.1 | Itens do menu principal | 2h | 2007-07-09 09:00 | 2007-07-09 11:00 | 11.12d | Andrei | 2h |
| 148 | 3.1.7.7.2 | Submenus individuais | 6h | 2007-07-09 09:00 | 2007-07-09 17:00 | 10.5d | Andrei | 6h |
| 149 | 3.1.8 | **Faturamentos** | 1.12d | 2007-07-09 09:00 | 2007-07-10 10:00 | 10.25d |  | 28h |
| 150 | 3.1.8.1 | **Relatórios** | 1.12d | 2007-07-09 09:00 | 2007-07-10 10:00 | 10.25d |  | 28h |
| 151 | 3.1.8.1.1 | Faturamento | 8h | 2007-07-09 09:00 | 2007-07-10 10:00 | 10.25d | Andrei | 8h |
| 152 | 3.1.8.1.2 | Faturamento Comparativo | 8h | 2007-07-09 09:00 | 2007-07-10 10:00 | 10.25d | Andrei | 8h |
| 153 | 3.1.8.1.3 | Faturamento por produto | 6h | 2007-07-09 09:00 | 2007-07-09 17:00 | 10.5d | Andrei | 6h |
| 154 | 3.1.8.1.4 | Previsão de Faturamento | 6h | 2007-07-09 09:00 | 2007-07-09 17:00 | 10.5d | Andrei | 6h |
| 155 | 3.1.9 | **Index** | 0.88d | 2007-07-09 09:00 | 2007-07-09 17:00 | 10.5d |  | 16h |
| 156 | 3.1.9.1 | Estrutura principal da tela | 6h | 2007-07-09 09:00 | 2007-07-09 17:00 | 10.5d | Andrei | 6h |
| 157 | 3.1.9.2 | Caixas (gadgets) | 6h | 2007-07-09 09:00 | 2007-07-09 17:00 | 10.5d | Andrei | 6h |
| 158 | 3.1.9.3 | Barra de Atalhos | 4h | 2007-07-09 09:00 | 2007-07-09 15:00 | 10.75d | Andrei | 4h |

| ID | WBS | Task | Duration | Start | Finish | Total slack | Resources | Work |
| --- | --- | --- | --- | --- | --- | --- | --- | --- |
| 159 | 3.1.10 | **Home** | 1.12d | 2007-07-09 09:00 | 2007-07-10 10:00 | 10.25d |  | 12h |
| 160 | 3.1.10.1 | Resumo | 8h | 2007-07-09 09:00 | 2007-07-10 10:00 | 10.25d | Andrei | 8h |
| 161 | 3.1.10.2 | Atalhos do Administrador | 4h | 2007-07-09 09:00 | 2007-07-09 15:00 | 10.75d | Andrei | 4h |
| 162 | 3.1.11 | **Menu** | 0.62d | 2007-07-09 09:00 | 2007-07-09 15:00 | 10.75d |  | 4h |
| 163 | 3.1.11.1 | Personalização de acordo com privilégios | 4h | 2007-07-09 09:00 | 2007-07-09 15:00 | 10.75d | Andrei | 4h |
| 164 | 3.1.12 | **Documentação** | 10d | 2007-07-09 08:00 | 2007-07-20 17:00 | 1.5d |  |  |
| 165 | 3.1.12.1 | Tags Doxygen | 24h | 2007-07-09 08:00 | 2007-07-11 17:00 | 8.5d |  |  |
| 166 | 3.1.12.2 | Manual do Administrador | 80h | 2007-07-09 08:00 | 2007-07-20 17:00 | 1.5d |  |  |
| 167 | 3.2 | **Interface Cliente** | 1.5d | 2007-07-09 08:00 | 2007-07-10 12:00 | 10d |  |  |
| 168 | 3.2.1 | Listagem das contas | 8h | 2007-07-09 08:00 | 2007-07-09 17:00 | 10.5d |  |  |
| 169 | 3.2.2 | Cadastro de conta adicional | 8h | 2007-07-09 08:00 | 2007-07-09 17:00 | 10.5d |  |  |
| 170 | 3.2.3 | **Contratos** | 1.5d | 2007-07-09 08:00 | 2007-07-10 12:00 | 10d |  |  |
| 171 | 3.2.3.1 | Resumo | 12h | 2007-07-09 08:00 | 2007-07-10 12:00 | 10d |  |  |
| 172 | 3.2.3.2 | Listagem | 6h | 2007-07-09 08:00 | 2007-07-09 15:00 | 10.75d |  |  |
| 173 | 3.2.3.3 | Faturas | 8h | 2007-07-09 08:00 | 2007-07-09 17:00 | 10.5d |  |  |
| 174 | 4 | **Backend** | 2d | 2007-07-09 08:00 | 2007-07-10 17:00 | 9.5d |  |  |
| 175 | 4.1 | Geração de Gráficos | 8h | 2007-07-09 08:00 | 2007-07-09 17:00 | 10.5d |  |  |
| 176 | 4.2 | **Limpeza** | 0.75d | 2007-07-09 08:00 | 2007-07-09 15:00 | 10.75d |  |  |
| 177 | 4.2.1 | Envelhecimento de Dados | 6h | 2007-07-09 08:00 | 2007-07-09 15:00 | 10.75d |  |  |
| 178 | 4.2.2 | Vacuum | 2h | 2007-07-09 08:00 | 2007-07-09 10:00 | 11.25d |  |  |
| 179 | 4.2.3 | Liberação de Conexões PPPoE | 5h | 2007-07-09 08:00 | 2007-07-09 14:00 | 10.88d |  |  |
| 180 | 4.3 | Monitoramento | 8h | 2007-07-09 08:00 | 2007-07-09 17:00 | 10.5d |  |  |
| 181 | 4.4 | Spool | 8h | 2007-07-09 08:00 | 2007-07-09 17:00 | 10.5d |  |  |
| 182 | 4.5 | InfoServer | 16h | 2007-07-09 08:00 | 2007-07-10 17:00 | 9.5d |  |  |

| ID | WBS | Task | Duration | Start | Finish | Total slack |
| --- | --- | --- | --- | --- | --- | --- |
| 183 | 4.6 | **Atualizador** | 2d | 2007-07-09 08:00 | 2007-07-10 17:00 | 9.5d |
| 184 | 4.6.1 | downloader | 4h | 2007-07-09 08:00 | 2007-07-09 12:00 | 11d |
| 185 | 4.6.2 | script executor | 4h | 2007-07-09 08:00 | 2007-07-09 12:00 | 11d |
| 186 | 4.6.3 | atualizador da estrutura do banco de dados | 16h | 2007-07-09 08:00 | 2007-07-10 17:00 | 9.5d |
| 187 | 4.6.4 | atualizador de licença | 16h | 2007-07-09 08:00 | 2007-07-10 17:00 | 9.5d |
| 188 | 4.7 | Autenticador Radius | 12h | 2007-07-09 08:00 | 2007-07-10 12:00 | 10d |
| 189 | 4.8 | **Documentação** | 2d | 2007-07-09 08:00 | 2007-07-10 17:00 | 9.5d |
| 190 | 4.8.1 | tags doxygen | 16h | 2007-07-09 08:00 | 2007-07-10 17:00 | 9.5d |
| 191 | 4.8.2 | documentação de configuração | 16h | 2007-07-09 08:00 | 2007-07-10 17:00 | 9.5d |
| 192 | 5 | **Deployment** | 4.5d | 2007-07-09 08:00 | 2007-07-13 12:00 | 7d |
| 193 | 5.1 | **CD de Instalação** | 4.5d | 2007-07-09 08:00 | 2007-07-13 12:00 | 7d |
| 194 | 5.1.1 | Script de Instalação | 32h | 2007-07-09 08:00 | 2007-07-12 17:00 | 7.5d |
| 195 | 5.1.2 | Base do CD | 36h | 2007-07-09 08:00 | 2007-07-13 12:00 | 7d |
| 196 | 5.1.3 | Empacotamento (packs tbz) | 24h | 2007-07-09 08:00 | 2007-07-11 17:00 | 8.5d |
| 197 | 5.1.4 | Documentação | 36h | 2007-07-09 08:00 | 2007-07-13 12:00 | 7d |
